# russiancinema.ru_planning

Schedule from MS Project, 2011-10-03 to 2012-01-05.
Alcatel-Lucent

## Calendars

- Standard: Mon-Fri 08:00-12:00, 13:00-17:00; Sat-Sun off.

## Resources

| Resource |
| --- |
| Стас |
| Илья |

## Schedule

| ID | WBS | Task | Type | Duration | Start | Finish | Predecessors | Total slack | Free slack | Constraint | Resources | Work |
| --- | --- | --- | --- | --- | --- | --- | --- | --- | --- | --- | --- | --- |
| 1 | 1 | **russiancinema.ru** |  | 69d? | 2011-10-03 08:00 | 2012-01-05 17:00 |  | 0d |  |  |  | 764h |
| 2 | 1.1 | **milestones** |  | 47.5d | 2011-10-04 17:00 | 2011-12-09 12:00 |  | 19.5d |  |  |  |  |
| 3 | 1.1.1 | готово новое окружение | milestone | 0d | 2011-10-04 17:00 | 2011-10-04 17:00 | 17 | 67d |  |  |  |  |
| 4 | 1.1.2 | готова таблица статуса контента | milestone | 0d | 2011-10-07 17:00 | 2011-10-07 17:00 | 20 | 64d |  |  |  |  |
| 5 | 1.1.3 | готовы Списки “Фильмы” и “ Персоналии” | milestone | 0d | 2011-10-18 17:00 | 2011-10-18 17:00 | 21 | 57d |  |  |  |  |
| 6 | 1.1.4 | готова Страница “Фильмы >> Персоны” | milestone | 0d | 2011-10-20 17:00 | 2011-10-20 17:00 | 25 | 55d |  |  |  |  |
| 7 | 1.1.5 | готовы Страница “Персоналии >> Фильмы” | milestone | 0d | 2011-10-27 12:00 | 2011-10-27 12:00 | 30 | 50.5d |  |  |  |  |
| 8 | 1.1.6 | Страницы “Фильмы >> Тексты” и “ Персоналии >> Тексты” | milestone | 0d | 2011-11-01 17:00 | 2011-11-01 17:00 | 34 | 47d |  |  |  |  |
| 9 | 1.1.7 | готов поиск | milestone | 0d | 2011-11-07 12:00 | 2011-11-07 12:00 | 43 | 43.5d |  |  |  |  |
| 10 | 1.1.8 | готовы изменения Look & Feel | milestone | 0d | 2011-11-23 12:00 | 2011-11-23 12:00 | 51 | 31.5d |  |  |  |  |
| 11 | 1.1.9 | готовы добавления новой функциональности сайта | milestone | 0d | 2011-12-09 12:00 | 2011-12-09 12:00 | 67 | 19.5d |  |  |  |  |
| 12 | 1.1.10 | все опции работают - начало этапа стабилизации | milestone | 0d | 2011-11-21 08:00 | 2011-11-21 08:00 |  | 0d |  | must start on 2011-11-21 08:00 |  |  |
| 13 | 1.1.11 | версия ресурса запущена в эксплуатацию с оговоренным набором опций | milestone | 0d | 2011-12-01 08:00 | 2011-12-01 08:00 |  | 0d |  | must start on 2011-12-01 08:00 |  |  |
| 14 | 1.2 | **работа с окружением** |  | 42d | 2011-10-03 08:00 | 2011-11-29 17:00 |  | 0d |  |  |  | 32h |
| 15 | 1.2.1 | **подготовка отдельного BETA-окружения для разработки** |  | 2d | 2011-10-03 08:00 | 2011-10-04 17:00 |  | 23d | 0d |  |  | 16h |
| 16 | 1.2.1.1 | копирование базы данных |  | 1d | 2011-10-03 08:00 | 2011-10-03 17:00 |  | 23d | 0d | start no earlier than 2011-10-03 08:00 | Стас | 8h |
| 17 | 1.2.1.2 | копирование движка и контента |  | 1d | 2011-10-04 08:00 | 2011-10-04 17:00 | 16 | 23d | 0d |  | Стас | 8h |
| 18 | 1.2.2 | паренос BETA версии на основной хостинг |  | 2d | 2011-11-28 08:00 | 2011-11-29 17:00 |  | 0d |  | must start on 2011-11-28 08:00 | Стас | 16h |
| 19 | 1.3 | **доработки в панели управления** |  | 20d | 2011-10-05 08:00 | 2011-11-01 17:00 | 15 | 19.5d |  |  |  | 112h |
| 20 | 1.3.1 | admin :: таблица статуса контента |  | 3d | 2011-10-05 08:00 | 2011-10-07 17:00 |  | 23d | 0d |  | Стас | 24h |
| 21 | 1.3.2 | **Списки “Фильмы” и “ Персоналии”** |  | 4d | 2011-10-13 08:00 | 2011-10-18 17:00 | 20 | 20d | 0d |  |  | 32h |
| 22 | 1.3.2.1 | Списки “Фильмы” и “ Персоналии” :: выбор записи |  | 2d | 2011-10-13 08:00 | 2011-10-14 17:00 |  | 20d | 0d |  | Стас | 16h |
| 23 | 1.3.2.2 | Списки “Фильмы” и “ Персоналии” :: удаление и пометка записи | milestone | 0d | 2011-10-14 17:00 | 2011-10-14 17:00 | 22 | 20d | 0d |  | Стас |  |
| 24 | 1.3.2.3 | Списки “Фильмы” и “ Персоналии” :: обновление списка, добавление записи |  | 2d | 2011-10-17 08:00 | 2011-10-18 17:00 | 23 | 20d | 0d |  | Стас | 16h |

Notes:
- 22: Запись (фильм или персона) выбирается из выпадающего списка с подстановкой
- 23: В списке можно удалять и отмечать отображаемые на сайте записи.
- 24: Обновление списка и добавление записи происходит без перезагрузки страницы.

| ID | WBS | Task | Type | Duration | Start | Finish | Predecessors | Total slack | Free slack | Resources | Work |
| --- | --- | --- | --- | --- | --- | --- | --- | --- | --- | --- | --- |
| 25 | 1.3.3 | **Страница “Фильмы >> Персоны”** |  | 2d | 2011-10-19 08:00 | 2011-10-20 17:00 |  | 20d | 0d |  | 16h |
| 26 | 1.3.3.1 | Страница “Фильмы >> Персоны” :: набор записей |  | 0.5d | 2011-10-19 08:00 | 2011-10-19 12:00 | 24 | 20d | 0d | Стас | 4h |
| 27 | 1.3.3.2 | Страница “Фильмы >> Персоны” :: выбор персоны |  | 0.5d | 2011-10-19 13:00 | 2011-10-19 17:00 | 26 | 20d | 0d | Стас | 4h |
| 28 | 1.3.3.3 | Страница “Фильмы >> Персоны” :: drag’n’drop |  | 0.5d | 2011-10-20 08:00 | 2011-10-20 12:00 | 27 | 20d | 0d | Стас | 4h |
| 29 | 1.3.3.4 | Страница “Фильмы >> Персоны” :: изменение записей |  | 0.5d | 2011-10-20 13:00 | 2011-10-20 17:00 | 28 | 20d | 0d | Стас | 4h |
| 30 | 1.3.4 | **Страница “Персоналии >> Фильмы”** |  | 4.5d | 2011-10-21 08:00 | 2011-10-27 12:00 |  | 19.5d | 0d |  | 12h |
| 31 | 1.3.4.1 | Страница “Персоналии >> Фильмы” :: Название фильма |  | 0.5d | 2011-10-21 08:00 | 2011-10-21 12:00 | 29 | 20d | 0d | Стас | 4h |
| 32 | 1.3.4.2 | Страница “Персоналии >> Фильмы” :: drag’n’drop |  | 0.5d | 2011-10-21 13:00 | 2011-10-21 17:00 | 31 | 20d | 0d | Стас | 4h |
| 33 | 1.3.4.3 | Страница “Персоналии >> Фильмы” :: изменение записей |  | 0.5d | 2011-10-27 08:00 | 2011-10-27 12:00 | 32 | 19.5d | 0d | Стас | 4h |
| 34 | 1.3.5 | **Страницы “Фильмы >> Тексты” и “ Персоналии >> Тексты”** |  | 3.5d | 2011-10-27 13:00 | 2011-11-01 17:00 |  | 19.5d | 0d |  | 28h |
| 35 | 1.3.5.1 | Страницы “Фильмы >> Тексты” и “ Персоналии >> Тексты” :: поля записи |  | 0.5d | 2011-10-27 13:00 | 2011-10-27 17:00 | 33 | 19.5d | 0d | Стас | 4h |
| 36 | 1.3.5.2 | Страницы “Фильмы >> Тексты” и “ Персоналии >> Тексты” :: категории записи |  | 0.5d | 2011-10-28 08:00 | 2011-10-28 12:00 | 35 | 19.5d | 0d | Стас | 4h |
| 37 | 1.3.5.3 | Страницы “Фильмы >> Тексты” и “ Персоналии >> Тексты” :: преобразование текстов |  | 0.5d | 2011-10-28 13:00 | 2011-10-28 17:00 | 36 | 19.5d | 0d | Стас | 4h |
| 38 | 1.3.5.4 | Страницы “Фильмы >> Тексты” и “ Персоналии >> Тексты” :: визуальный редактор |  | 0.5d | 2011-10-31 08:00 | 2011-10-31 12:00 | 37 | 19.5d | 0d | Стас | 4h |
| 39 | 1.3.5.5 | Страницы “Фильмы >> Тексты” и “ Персоналии >> Тексты” :: drag’n’drop |  | 0.5d | 2011-10-31 13:00 | 2011-10-31 17:00 | 38 | 19.5d | 0d | Стас | 4h |
| 40 | 1.3.5.6 | Страницы “Фильмы >> Тексты” и “ Персоналии >> Тексты” :: свернутое/развернутое состояние записи |  | 0.5d | 2011-11-01 08:00 | 2011-11-01 12:00 | 39 | 19.5d | 0d | Стас | 4h |
| 41 | 1.3.5.7 | Страницы “Фильмы >> Тексты” и “ Персоналии >> Тексты” :: изменение записей |  | 0.5d | 2011-11-01 13:00 | 2011-11-01 17:00 | 40 | 19.5d |  | Стас | 4h |
| 42 | 1.4 | **доработки сайта** |  | 49.5d? | 2011-10-03 08:00 | 2011-12-09 12:00 |  | 19.5d |  |  | 460h |
| 43 | 1.4.1 | **доработки поиска** |  | 3.5d | 2011-11-01 17:00 | 2011-11-07 12:00 | 34 | 19.5d | 0d |  | 28h |
| 44 | 1.4.1.1 | поиск :: поле ввода поискового запроса :: расположение | milestone | 0d | 2011-11-01 17:00 | 2011-11-01 17:00 |  | 19.5d | 0d | Стас |  |
| 45 | 1.4.1.2 | поиск :: поле ввода поискового запроса :: выпадающий список |  | 0.5d | 2011-11-02 08:00 | 2011-11-02 12:00 | 44 | 19.5d | 0d | Стас | 4h |
| 46 | 1.4.1.3 | поиск :: результат поискового запроса :: источники данных |  | 0.5d | 2011-11-02 13:00 | 2011-11-02 17:00 | 45 | 19.5d | 0d | Стас | 4h |
| 47 | 1.4.1.4 | поиск :: результат поискового запроса :: поисковая фраза |  | 0.5d | 2011-11-03 08:00 | 2011-11-03 12:00 | 46 | 19.5d | 0d | Стас | 4h |
| 48 | 1.4.1.5 | поиск :: результат поискового запроса :: сортировка и вес |  | 0.5d | 2011-11-03 13:00 | 2011-11-03 17:00 | 47 | 19.5d | 0d | Стас | 4h |
| 49 | 1.4.1.6 | поиск :: результат поискового запроса :: сортировка блоков |  | 0.5d | 2011-11-04 08:00 | 2011-11-04 12:00 | 48 | 19.5d | 0d | Стас | 4h |
| 50 | 1.4.1.7 | поиск :: результат поискового запроса :: порционный вывод результатов |  | 1d | 2011-11-04 13:00 | 2011-11-07 12:00 | 49 | 19.5d |  | Стас | 8h |

Notes:
- 26: На странице присутствует исходный набор записей (режиссер, сценарист, и т.д.), остальные свободно добавляются, удаляются и перемещаются.
- 27: Имя персоны выбирается из выпадающего списка с подстановкой.
- 28: Перемещение записей в списке осуществляется перетаскиванием мышкой (dragndrop).
- 29: Добавление, удаление, перемещение и редактирование записей происходит без перезагрузки страницы.
- 31: Название фильма выбирается из выпадающего списка с подстановкой.
- 32: Перемещение записей в списке осуществляется перетаскиванием мышкой (dragndrop).
- 33: Добавление, удаление, перемещение и редактирование записей происходит без перезагрузки страницы.

| ID | WBS | Task | Duration | Start | Finish | Predecessors | Total slack | Free slack | Constraint | Resources | Work |
| --- | --- | --- | --- | --- | --- | --- | --- | --- | --- | --- | --- |
| 51 | 1.4.2 | **изменение Look & Feel** | 37.5d | 2011-10-03 08:00 | 2011-11-23 12:00 |  | 19.5d | 0d |  |  | 352h |
| 52 | 1.4.2.1 | обсуждение дизайна | 8d | 2011-10-03 08:00 | 2011-10-12 17:00 |  | 33d | 0d | start no earlier than 2011-10-03 08:00 | Илья | 64h |
| 53 | 1.4.2.2 | **подготовка экранов** | 24d | 2011-10-13 08:00 | 2011-11-15 17:00 | 52 | 23d |  |  |  | 192h |
| 54 | 1.4.2.2.1 | Экран 1 | 4d | 2011-10-13 08:00 | 2011-10-18 17:00 |  | 33d | 13.5d |  | Илья | 32h |
| 55 | 1.4.2.2.2 | Экран 2 | 4d | 2011-10-19 08:00 | 2011-10-24 17:00 |  | 31d | 11.5d |  | Илья | 32h |
| 56 | 1.4.2.2.3 | Экран 3 | 4d | 2011-10-25 08:00 | 2011-10-28 17:00 |  | 29d | 9.5d |  | Илья | 32h |
| 57 | 1.4.2.2.4 | Экран 4 | 4d | 2011-10-31 08:00 | 2011-11-03 17:00 |  | 27d | 7.5d |  | Илья | 32h |
| 58 | 1.4.2.2.5 | Экран 5 | 4d | 2011-11-04 08:00 | 2011-11-09 17:00 |  | 25d | 5.5d |  | Илья | 32h |
| 59 | 1.4.2.2.6 | Экран 6 | 4d | 2011-11-10 08:00 | 2011-11-15 17:00 |  | 23d | 3.5d |  | Илья | 32h |
| 60 | 1.4.2.3 | **внедрение экранов в BETA версию** | 12d | 2011-11-07 13:00 | 2011-11-23 12:00 | 43 | 19.5d | 0d |  |  | 96h |
| 61 | 1.4.2.3.1 | Экран 1 | 2d | 2011-11-07 13:00 | 2011-11-09 12:00 | 54 | 19.5d | 0d |  | Стас | 16h |
| 62 | 1.4.2.3.2 | Экран 2 | 2d | 2011-11-09 13:00 | 2011-11-11 12:00 | 55, 61 | 19.5d | 0d |  | Стас | 16h |
| 63 | 1.4.2.3.3 | Экран 3 | 2d | 2011-11-11 13:00 | 2011-11-15 12:00 | 56, 62 | 19.5d | 0d |  | Стас | 16h |
| 64 | 1.4.2.3.4 | Экран 4 | 2d | 2011-11-15 13:00 | 2011-11-17 12:00 | 57, 63 | 19.5d | 0d |  | Стас | 16h |
| 65 | 1.4.2.3.5 | Экран 5 | 2d | 2011-11-17 13:00 | 2011-11-21 12:00 | 58, 64 | 19.5d | 0d |  | Стас | 16h |
| 66 | 1.4.2.3.6 | Экран 6 | 2d | 2011-11-21 13:00 | 2011-11-23 12:00 | 59, 65 | 19.5d |  |  | Стас | 16h |
| 67 | 1.4.3 | **добавление новой функциональности сайта** | 12d? | 2011-11-23 13:00 | 2011-12-09 12:00 | 60 | 19.5d | 0d |  |  | 80h |
| 68 | 1.4.3.1 | осмысленное содержание адресной строки | 1d | 2011-11-23 13:00 | 2011-11-24 12:00 |  | 19.5d | 0d |  | Стас | 8h |
| 69 | 1.4.3.2 | заголовок страницы не меняется при переходе от страницы к странице | 1d? | 2011-11-24 13:00 | 2011-11-25 12:00 | 68 | 19.5d | 0d |  | Стас | 8h |
| 70 | 1.4.3.3 | Персоналии/Фильмы - Фото галерея :: новый формат | 2d | 2011-11-25 13:00 | 2011-12-01 12:00 | 69 | 19.5d | 0d |  | Стас | 16h |
| 71 | 1.4.3.4 | Тексты :: добавить структуру | 3d | 2011-12-01 13:00 | 2011-12-06 12:00 | 70 | 19.5d | 0d |  | Стас | 24h |
| 72 | 1.4.3.5 | Связь Фестивалей и Фильмов | 3d | 2011-12-06 13:00 | 2011-12-09 12:00 | 71 | 19.5d |  |  | Стас | 24h |
| 73 | 1.5 | **недоступность ресурсов** | 64d | 2011-10-10 08:00 | 2012-01-05 17:00 |  | 0d |  |  |  | 160h |
| 74 | 1.5.1 | Стас - Москва | 3d | 2011-10-10 08:00 | 2011-10-12 17:00 |  | 0d |  | must start on 2011-10-10 08:00 | Стас | 24h |
| 75 | 1.5.2 | Стас - Мадрид | 3d | 2011-10-24 08:00 | 2011-10-26 17:00 |  | 0d |  | must start on 2011-10-24 08:00 | Стас | 24h |

| ID | WBS | Task | Type | Duration | Start | Finish | Predecessors | Total slack | Constraint | Resources | Work |
| --- | --- | --- | --- | --- | --- | --- | --- | --- | --- | --- | --- |
| 76 | 1.5.3 | **postponed** |  | 14d | 2011-12-19 08:00 | 2012-01-05 17:00 |  | 0d |  |  | 112h |
| 77 | 1.5.3.1 | новый релиз | milestone | 0d | 2011-12-19 08:00 | 2011-12-19 08:00 |  | 0d | must start on 2011-12-19 08:00 |  |  |
| 78 | 1.5.3.2 | Лица Отечественного Кино |  | 10d | 2011-12-19 08:00 | 2011-12-30 17:00 | 77 | 0d |  | Стас | 80h |
| 79 | 1.5.3.3 | логическая ошибка в меню |  | 4d | 2012-01-02 08:00 | 2012-01-05 17:00 | 78 | 0d |  | Стас | 32h |
